# temp

Schedule from MS Project, 2024-02-21 to 2024-04-02, costs in ₫, A marks actual dates.

## Calendars

- Standard: Mon-Fri 08:00-12:00, 13:00-17:00; Sat-Sun off.

## Resources

| Resource | Group | Rate |
| --- | --- | --- |
| Nguyễn Ngọc Cảnh Phong - Quản Lý | Quản Lý | 100000 |
| Trần Văn Huy - Lập Trình Viên 1 | Lập Trình | 40000 |
| Hoàng Thanh Tùng- Kiểm Thử Viên 1 | Kiểm Thử | 50000 |
| Trần Văn Huy - Kĩ Thuật Viên | Kĩ Thuật | 50000 |
| Đỗ Thị Diệu Ái - Phân Tích Viên 2 | Phân Tích | 55000 |
| Hoàng Thị Kiều Oanh - Thiết Kế Giao Diện 2 | Giao Diện | 40000 |
| Nguyễn Ngọc Cảnh Phong - Lập Trình Viên 2 | Lập Trình | 40000 |
| Hoàng Thanh Tùng - Phân Tích Viên 1 | Phân Tích | 55000 |
| Lê Thị Bảo Trâm - Thiết Kế Giao Diện 1 | Giao Diện | 40000 |
| Nguyễn Thị Minh Thư- Kiểm Thử Viên 2 | Kiểm Thử | 40000 |
| Nguyễn Ngọc Cảnh Phong - Thiết Kế Dữ Liệu 1 | Dữ Liệu | 70000 |
| Đỗ Thị Diệu Ái - Thiết Kế Dữ Liệu 2 | Dữ Liệu | 70000 |
| Hoàng Thị Kiều Oanh - Phân Tích Viên 3 | Phân Tích | 55000 |
| Nguyễn Thị Minh Thư - Thiết Kế Dữ Liệu 3 | Dữ Liệu | 70000 |

## Schedule

| ID | WBS | Task | Type | Duration | Start | Finish | Predecessors | Complete | Remaining | Total slack | Free slack | Constraint | Resources | Work | Actual work | Cost | Actual cost |
| --- | --- | --- | --- | --- | --- | --- | --- | --- | --- | --- | --- | --- | --- | --- | --- | --- | --- |
| 1 | 1 | **XÂY DỰNG HỆ THỐNG QUẢN LÝ KẾT NỐI VÀ CUNG CẤP GIA SƯ TP-HUẾ** |  | 30d? | 2024-02-21 A | 2024-04-02 |  | 3% | 29.12d? | 0d |  |  |  | 392h | 8h | 20,080,000 | 800,000 |
| 2 | 1.1 | Bản kế hoạch dự án |  | 1d | 2024-02-21 A | 2024-02-21 A |  | 100% |  |  |  | finish no earlier than 2024-02-21 | Nguyễn Ngọc Cảnh Phong - Quản Lý | 8h | 8h | 800,000 | 800,000 |
| 3 | 1.2 | Thời gian phê duyệt dự án |  | 1d | 2024-02-22 A | 2024-02-22 A | 2 | 100% |  |  |  | start no earlier than 2024-02-22 |  |  |  |  |  |
| 4 | 1.3 | **Phân Tích** |  | 9d | 2024-02-21 | 2024-03-04 |  |  |  | 0d |  |  |  | 136h |  | 7,840,000 |  |
| 5 | 1.3.1 | Thu Thập, Phân Tích Nhu Cầu Khách Hàng |  | 2d | 2024-02-21 | 2024-02-22 |  |  |  | 0d |  |  | Hoàng Thanh Tùng - Phân Tích Viên 1; Đỗ Thị Diệu Ái - Phân Tích Viên 2 | 32h |  | 1,760,000 |  |
| 6 | 1.3.2 | Lên Ý Tưởng, Phân Tích Thông Số Kĩ Thuật |  | 4d | 2024-02-23 | 2024-02-28 | 5 |  |  | 0d |  |  | Hoàng Thanh Tùng - Phân Tích Viên 1; Đỗ Thị Diệu Ái - Phân Tích Viên 2 | 64h |  | 3,520,000 |  |
| 7 | 1.3.3 | Lập Bảng Báo Cáo, Phản Hồi Khách Hàng |  | 2d | 2024-02-29 | 2024-03-01 | 6 |  |  | 0d |  |  | Hoàng Thanh Tùng - Phân Tích Viên 1; Đỗ Thị Diệu Ái - Phân Tích Viên 2 | 32h |  | 1,760,000 |  |
| 8 | 1.3.4 | Chờ Phê Duyệt Để Tiến Hành |  | 1d | 2024-03-04 | 2024-03-04 | 7 |  |  | 0d |  |  | Nguyễn Ngọc Cảnh Phong - Quản Lý | 8h |  | 800,000 |  |
| 9 | 1.3.5 | Hoàn Thành Phân Tích | milestone | 0d | 2024-03-04 | 2024-03-04 | 8 |  |  | 0d |  |  | Đỗ Thị Diệu Ái - Phân Tích Viên 2 |  |  |  |  |
| 10 | 1.4 | **Thiết kế** |  | 8d | 2024-03-05 | 2024-03-14 |  |  |  | 0d |  |  |  | 88h |  | 4,000,000 |  |
| 11 | 1.4.1 | Thiết Kế Cấu Trúc Phần Mềm |  | 2d | 2024-03-05 | 2024-03-06 | 9 |  |  | 0d |  |  | Lê Thị Bảo Trâm - Thiết Kế Giao Diện 1 | 16h |  | 640,000 |  |
| 12 | 1.4.2 | Thiết Kế Giao Diện |  | 2d | 2024-03-07 | 2024-03-08 | 11 |  |  | 0d |  |  | Hoàng Thị Kiều Oanh - Thiết Kế Giao Diện 2 | 16h |  | 640,000 |  |
| 13 | 1.4.3 | Thiết Kế Cơ Sở Dữ Liệu |  | 2d | 2024-03-11 | 2024-03-12 | 12 |  |  | 0d |  |  | Lê Thị Bảo Trâm - Thiết Kế Giao Diện 1; Hoàng Thị Kiều Oanh - Thiết Kế Giao Diện 2 | 32h |  | 1,280,000 |  |
| 14 | 1.4.4 | Thiết Kế Thành Phần Hệ Thống |  | 1d | 2024-03-13 | 2024-03-13 | 13 |  |  | 0d |  |  | Lê Thị Bảo Trâm - Thiết Kế Giao Diện 1; Hoàng Thị Kiều Oanh - Thiết Kế Giao Diện 2 | 16h |  | 640,000 |  |
| 15 | 1.4.5 | Chờ Phê Duyệt Để Tiến Hành |  | 1d | 2024-03-14 | 2024-03-14 | 14 |  |  | 0d |  |  | Nguyễn Ngọc Cảnh Phong - Quản Lý | 8h |  | 800,000 |  |
| 16 | 1.4.6 | Hoàn Thành Thiết kế | milestone | 0d | 2024-03-14 | 2024-03-14 | 15 |  |  | 0d |  |  |  |  |  |  |  |
| 17 | 1.5 | **Triển Khai** |  | 22d? | 2024-02-21 | 2024-03-21 |  |  |  | 8d |  |  |  | 80h |  | 3,200,000 |  |
| 18 | 1.5.1 | **Triển Khai Logic Hệ Thông** |  | 2d | 2024-03-15 | 2024-03-18 | 16 |  |  | 0d |  |  | Trần Văn Huy - Lập Trình Viên 1; Nguyễn Ngọc Cảnh Phong - Lập Trình Viên 2 | 32h |  | 1,280,000 |  |
| 19 | 1.5.1.1 | **Phân tích thuật toán cho từng chức năng hệ thống** |  | 2d | 2024-03-15 | 2024-03-18 |  |  |  | 0d |  |  |  |  |  |  |  |
| 20 | 1.5.1.1.1 | Phân tích và hiểu rõ các yêu câu của từng chức năng |  | 0.5d | 2024-03-15 | 2024-03-15 | 16 |  |  | 0d |  |  |  |  |  |  |  |
| 21 | 1.5.1.1.2 | Xác định thuật toán và quy trình logic xử lý cho mỗi chức năng |  | 1.5d | 2024-03-15 | 2024-03-18 | 20 |  |  | 0d |  |  |  |  |  |  |  |
| 22 | 1.5.1.2 | **Xác định ngôn ngữ lập trình, công cụ phát triển và triển khai thuật toán** |  | 2d | 2024-03-18 | 2024-03-19 |  |  |  | 10d |  |  |  |  |  |  |  |
| 23 | 1.5.1.2.1 | Chọn ngôn ngữ lập trình, công cụ phát triển và thư viện |  | 2h | 2024-03-18 | 2024-03-18 | 21SS |  |  | 10d | 0d | start no earlier than 2024-03-18 |  |  |  |  |  |
| 24 | 1.5.1.2.2 | Triển khai xây dựng thuật toán cho các chức năng |  | 1d | 2024-03-18 | 2024-03-18 | 23SS |  |  | 10d | 0d | start no earlier than 2024-02-19 |  |  |  |  |  |
| 25 | 1.5.1.2.3 | Kiểm tra tính logic xử lý của từng chức năng |  | 1d | 2024-03-19 | 2024-03-19 | 24 |  |  | 10d |  |  |  |  |  |  |  |

| ID | WBS | Task | Duration | Start | Finish | Predecessors | Total slack | Resources | Work | Cost |
| --- | --- | --- | --- | --- | --- | --- | --- | --- | --- | --- |
| 26 | 1.5.1.3 | **Liên kết các chức năng, logic hóa hệ thống** | 1d? | 2024-02-21 | 2024-02-21 |  | 29d |  |  |  |
| 27 | 1.5.1.3.1 | Kết nối các chức năng, đảm bảo tính logic hệ thống | 1d? | 2024-02-21 | 2024-02-21 |  | 29d |  |  |  |
| 28 | 1.5.1.3.2 | Kiểm tra tính logic, hoạt động của hệ thống và đảm bảo không có sự xung đột giữa các chức năng | 1d? | 2024-02-21 | 2024-02-21 |  | 29d |  |  |  |
| 29 | 1.5.1.4 | **Kiểm tra và xác định tính đúng đắn của thuật toán và quy trình logic của hệ thống** | 1d? | 2024-02-21 | 2024-02-21 |  | 29d |  |  |  |
| 30 | 1.5.1.4.1 | Thực hiện các bước kiểm tra thuật toán và quy trình logic hệ thống | 1d? | 2024-02-21 | 2024-02-21 |  | 29d |  |  |  |
| 31 | 1.5.1.4.2 | Gỡ lỗi và sửa các lỗi phát sinh trong quá trình triển khai thuật toán | 1d? | 2024-02-21 | 2024-02-21 |  | 29d |  |  |  |
| 32 | 1.5.1.5 | **Viết báo cáo thuật toán, logic hệ thống** | 1d? | 2024-02-21 | 2024-02-21 |  | 29d |  |  |  |
| 33 | 1.5.1.5.1 | Lập báo cáo chi tiết về các thuật toán được dùng trong mỗi chức năng | 1d? | 2024-02-21 | 2024-02-21 |  | 29d |  |  |  |
| 34 | 1.5.1.5.2 | Lập báo cáo cụ thể logic hoạt động của mỗi chức năng và nguyên lý hoạt động của các chức năng đó | 1d? | 2024-02-21 | 2024-02-21 |  | 29d |  |  |  |
| 35 | 1.5.2 | **Phát Triển Các Thành Phần CSDL** | 1d? | 2024-03-19 | 2024-03-19 | 18 | 0d | Trần Văn Huy - Lập Trình Viên 1; Nguyễn Ngọc Cảnh Phong - Lập Trình Viên 2 | 16h | 640,000 |
| 36 | 1.5.2.1 | **Thiết kế bảng, thành phần dữ liệu** | 1d? | 2024-03-19 | 2024-03-19 |  | 0d |  |  |  |
| 37 | 1.5.2.1.1 | Cài đặt và sử dụng SQL Sever để thiết kế cơ sở dữ liệu | 1d? | 2024-03-19 | 2024-03-19 |  | 0d |  |  |  |
| 38 | 1.5.2.1.2 | Xây dựng cấu trúc các bảng dữ liệu cần thiết dựa trên mô hình dữ liệu đã thiết kế | 1d? | 2024-03-19 | 2024-03-19 |  | 0d |  |  |  |
| 39 | 1.5.2.1.3 | Xây dựng các liên kết, ràng buộc giữa các bảng, đảm bảo tính nhất quán dữ liệu | 1d? | 2024-03-19 | 2024-03-19 |  | 0d |  |  |  |
| 40 | 1.5.2.2 | **Thiết kế chức năng** | 1d? | 2024-03-19 | 2024-03-19 |  | 0d |  |  |  |
| 41 | 1.5.2.2.1 | Lập trình các hàm chức năng truy xuất dữ liệu bao gồm thêm, sửa, xóa và truy vấn(function)) | 1d? | 2024-03-19 | 2024-03-19 |  | 0d |  |  |  |
| 42 | 1.5.2.2.2 | Lập trình các quy trình xử lý dữ liệu(procedure) | 1d? | 2024-03-19 | 2024-03-19 |  | 0d |  |  |  |
| 43 | 1.5.2.2.3 | Lập trình các bẩy sự kiện(trigger) | 1d? | 2024-03-19 | 2024-03-19 |  | 0d |  |  |  |
| 44 | 1.5.2.2.4 | Lập trình các giao tác đảm bảo tính nhất quán dữ liệu(transaction) | 1d? | 2024-03-19 | 2024-03-19 |  | 0d |  |  |  |
| 45 | 1.5.2.3 | **Tối ưu hóa và đảm bảo hiệu suất** | 1d? | 2024-03-19 | 2024-03-19 |  | 0d |  |  |  |
| 46 | 1.5.2.3.1 | Tối ưu hóa lại cấu trúc cơ sở dữ liệu để đảm bảo hiệu suất và khả năng mở rộng của hệ thống | 1d? | 2024-03-19 | 2024-03-19 |  | 0d |  |  |  |
| 47 | 1.5.2.3.2 | Kiểm tra lại và đánh giá hiệu suất của các truy vấn và thao tác dữ liệu | 1d? | 2024-03-19 | 2024-03-19 |  | 0d |  |  |  |
| 48 | 1.5.2.4 | **Viết báo cáo** | 1d? | 2024-02-21 | 2024-02-21 |  | 29d |  |  |  |
| 49 | 1.5.2.4.1 | Lập báo cáo chi tiết các thành phần trong CSDL(Các bảng, thuộc tính, kiểu dữ liệu,...) | 1d? | 2024-02-21 | 2024-02-21 |  | 29d |  |  |  |
| 50 | 1.5.2.4.2 | Viết hướng dẫn chi tiết sử dụng các hàm chức năng, quy trình, bẩy sự kiện và giao tác của CSDL | 1d? | 2024-02-21 | 2024-02-21 |  | 29d |  |  |  |
| 51 | 1.5.2.4.3 | Đánh giá chi tiết hiệu suất hoạt động của các hàm chức năng, quy trình, bẩy sự kiện và giao tác | 1d? | 2024-02-21 | 2024-02-21 |  | 29d |  |  |  |

| ID | WBS | Task | Duration | Start | Finish | Predecessors | Total slack | Resources | Work | Cost |
| --- | --- | --- | --- | --- | --- | --- | --- | --- | --- | --- |
| 52 | 1.5.3 | **Lập Trình Hệ Thống** | 1d? | 2024-03-20 | 2024-03-20 | 35 | 0d | Trần Văn Huy - Lập Trình Viên 1; Nguyễn Ngọc Cảnh Phong - Lập Trình Viên 2 | 16h | 640,000 |
| 53 | 1.5.3.1 | **Xây dựng giao diện người dùng(UI)** | 1d? | 2024-03-20 | 2024-03-20 |  | 0d |  |  |  |
| 54 | 1.5.3.1.1 | Xây dựng giao diện người dùng dựa trên thiết kế giao diện đã được xác định trước đó | 1d? | 2024-03-20 | 2024-03-20 |  | 0d |  |  |  |
| 55 | 1.5.3.1.2 | Sử dụng framework UI để phát triển giao diện người dùng tương tác | 1d? | 2024-03-20 | 2024-03-20 |  | 0d |  |  |  |
| 56 | 1.5.3.2 | **Tích hợp các thành phần** | 1d? | 2024-03-20 | 2024-03-20 |  | 0d |  |  |  |
| 57 | 1.5.3.2.1 | Tích hợp CSDL vào các chức năng logic hệ thống | 1d? | 2024-03-20 | 2024-03-20 |  | 0d |  |  |  |
| 58 | 1.5.3.2.2 | Tích hợp giao diện vào các chức năng cụ thể để tạo ra ứng dụng hoàn chỉnh | 1d? | 2024-03-20 | 2024-03-20 |  | 0d |  |  |  |
| 59 | 1.5.3.3 | **Kiểm tra và gỡ lỗi** | 1d? | 2024-03-20 | 2024-03-20 |  | 0d |  |  |  |
| 60 | 1.5.3.3.1 | Kiểm tra đảm bảo các chức năng và giao diện người dùng hoạt động đúng đắn và không gặp lỗi | 1d? | 2024-03-20 | 2024-03-20 |  | 0d |  |  |  |
| 61 | 1.5.3.3.2 | Sửa các lỗi phát sinh trong quá trình lập trình | 1d? | 2024-03-20 | 2024-03-20 |  | 0d |  |  |  |
| 62 | 1.5.4 | **Đánh Giá Và Tối Ưu Mã Nguồn** | 1d? | 2024-03-21 | 2024-03-21 | 52 | 0d | Trần Văn Huy - Lập Trình Viên 1; Nguyễn Ngọc Cảnh Phong - Lập Trình Viên 2 | 16h | 640,000 |
| 63 | 1.5.4.1 | **Kiểm tra mã nguồn** | 1d? | 2024-03-21 | 2024-03-21 |  | 0d |  |  |  |
| 64 | 1.5.4.1.1 | Kiêm tra mã nguồn để phát hiện các lỗi cú pháp, cảnh báo tiềm ẩn và các vấn đề bảo mật | 1d? | 2024-03-21 | 2024-03-21 |  | 0d |  |  |  |
| 65 | 1.5.9.1.2 | Kiểm tra tính nhất quán và tuân thủ các quy tắc lập trình | 1d? | 2024-03-21 | 2024-03-21 |  | 0d |  |  |  |
| 66 | 1.5.4.2 | **Phân tích hiệu suất** | 1d? | 2024-03-21 | 2024-03-21 |  | 0d |  |  |  |
| 67 | 1.5.4.2.1 | Đánh giá hiệu suất của mã nguồn bao gồm thời gian phản hồi, tải trọng, sử dụng tài nguyên | 1d? | 2024-03-21 | 2024-03-21 |  | 0d |  |  |  |
| 68 | 1.5.4.2.2 | Xác định các vấn đề liên quan đến hiệu suất và điều chỉnh mã nguồn để cải thiện hiệu suất | 1d? | 2024-03-21 | 2024-03-21 |  | 0d |  |  |  |
| 69 | 1.5.4.3 | **Tối ưu hóa mã nguồn** | 1d? | 2024-03-21 | 2024-03-21 |  | 0d |  |  |  |
| 70 | 1.5.4.3.1 | Loại bỏ các mã không cần thiết hoặc mã lập lại | 1d? | 2024-03-21 | 2024-03-21 |  | 0d |  |  |  |
| 71 | 1.5.4.3.2 | Sử dụng các cấu trúc dữ liệu và thuật toán hiệu quả để tối ưu hóa thời gian thực thi và tài nguyên sử dụng | 1d? | 2024-03-21 | 2024-03-21 |  | 0d |  |  |  |
| 72 | 1.5.4.4 | **Kiểm tra tính bảo mật** | 1d? | 2024-03-21 | 2024-03-21 |  | 0d |  |  |  |
| 73 | 1.5.4.4.1 | Đánh giá và kiểm tra tính bảo mật của mã nguồn | 1d? | 2024-03-21 | 2024-03-21 |  | 0d |  |  |  |
| 74 | 1.5.4.4.2 | Mã hóa dữ liệu, kiểm tra nhập liệu và xác thực người dùng | 1d? | 2024-03-21 | 2024-03-21 |  | 0d |  |  |  |
| 75 | 1.5.4.5 | **Viết báo cáo đánh giá hiệu suất hoạt động, tính bảo mật hệ thống và khả năng mở rộng mã nguồn** | 1d? | 2024-03-21 | 2024-03-21 |  | 0d |  |  |  |
| 76 | 1.5.4.5.1 | Lập báo cáo đánh giá mã nguồn | 1d? | 2024-03-21 | 2024-03-21 |  | 0d |  |  |  |
| 77 | 1.5.4.5.2 | Lập báo cáo đánh giá hiệu suất phần mềm | 1d? | 2024-03-21 | 2024-03-21 |  | 0d |  |  |  |
| 78 | 1.5.4.5.3 | Lập báo cáo đánh giá mức độ an toàn hệ thống | 1d? | 2024-03-21 | 2024-03-21 |  | 0d |  |  |  |

| ID | WBS | Task | Type | Duration | Start | Finish | Predecessors | Total slack | Resources | Work | Cost |
| --- | --- | --- | --- | --- | --- | --- | --- | --- | --- | --- | --- |
| 79 | 1.5.4.6 | **Viết bảng hướng dẫn sử dụng phần mềm** |  | 1d? | 2024-03-21 | 2024-03-21 |  | 0d |  |  |  |
| 80 | 1.5.4.6.1 | Trình bày cách sử dụng từng tính năng |  | 1d? | 2024-03-21 | 2024-03-21 |  | 0d |  |  |  |
| 81 | 1.5.4.6.2 | Tổng hợp các lưu ý khi sử dụng hệ thống |  | 1d? | 2024-03-21 | 2024-03-21 |  | 0d |  |  |  |
| 82 | 1.5.5 | Hoàn Thành Lập Trình | milestone | 0d | 2024-03-21 | 2024-03-21 | 62 | 0d |  |  |  |
| 83 | 1.6 | **Kiểm Thử** |  | 6d | 2024-03-22 | 2024-03-29 |  | 0d |  | 64h | 3,440,000 |
| 84 | 1.6.1 | Lập Bảng Kế Hoạch Kiểm Thử |  | 1d | 2024-03-22 | 2024-03-22 | 82 | 0d | Hoàng Thanh Tùng- Kiểm Thử Viên 1 | 8h | 400,000 |
| 85 | 1.6.2 | Viết Và Tiến Hành Các Ca Kiểm Thử |  | 1d | 2024-03-25 | 2024-03-25 | 84 | 0d | Hoàng Thanh Tùng- Kiểm Thử Viên 1 | 8h | 400,000 |
| 86 | 1.6.3 | Kiểm Thử Toàn Hệ Thống |  | 1d | 2024-03-26 | 2024-03-26 | 85 | 0d | Hoàng Thanh Tùng- Kiểm Thử Viên 1 | 8h | 400,000 |
| 87 | 1.6.4 | Xác Định Và Sữa Lỗi |  | 2d | 2024-03-27 | 2024-03-28 | 86 | 0d | Hoàng Thanh Tùng- Kiểm Thử Viên 1; Trần Văn Huy - Lập Trình Viên 1 | 32h | 1,440,000 |
| 88 | 1.6.5 | Đánh Giá Cuối Cùng |  | 1d | 2024-03-29 | 2024-03-29 | 87 | 0d | Nguyễn Ngọc Cảnh Phong - Quản Lý | 8h | 800,000 |
| 89 | 1.6.6 | Hoàn Thành Kiểm Thử | milestone | 0d | 2024-03-29 | 2024-03-29 | 88 | 0d |  |  |  |
| 90 | 1.7 | **Bàn Giao** |  | 2d | 2024-04-01 | 2024-04-02 |  | 0d |  | 16h | 800,000 |
| 91 | 1.7.1 | Cài Đặt Phần Mềm |  | 1d | 2024-04-01 | 2024-04-01 | 89 | 0d | Trần Văn Huy - Kĩ Thuật Viên | 8h | 400,000 |
| 92 | 1.7.2 | Hướng Dẫn Phầm Mềm |  | 1d | 2024-04-02 | 2024-04-02 | 91 | 0d | Trần Văn Huy - Kĩ Thuật Viên | 8h | 400,000 |
